# ProjectSchedule

Schedule from MS Project, 2020-10-05 to 2021-11-10, costs in $, A marks actual dates.

## Calendars

- Standard: Mon-Fri 08:00-12:00, 13:00-17:00; Sat-Sun off.

## Resources

| Resource | Rate |
| --- | --- |
| ReqEng_1 - Lead | 28 |
| ReqEng_2 | 25 |
| ReqEng_3 | 25 |
| ReqEng_4 | 25 |
| ReqEng_5 | 25 |
| Arch_1 - Lead | 43 |
| Arch_2 | 40 |
| Arch_3 | 40 |
| Dev_1 - Lead | 33 |
| Dev_2 | 30 |
| Dev_3 | 30 |
| Dev_4 | 30 |
| Dev_5 | 30 |
| Tester_1 - Lead | 26 |
| Tester_2 | 23 |
| Tester_3 | 23 |
| Tester_4 | 23 |
| DepEng_1 - Lead | 28 |
| DepEng_2 | 25 |
| OITDirector | 30 |
| Relations Manager | 25 |
| Project Manager | 45 |
| Test |  |

## Schedule

| ID | WBS | Task | Duration | Start | Finish | Predecessors | Complete | Remaining | Total slack | Resources | Work | Actual work | Cost | Actual cost |
| --- | --- | --- | --- | --- | --- | --- | --- | --- | --- | --- | --- | --- | --- | --- |
| 1 | 1 | **GET SAFE!** | 288d | 2020-10-05 A | 2021-11-10 |  | 73% | 76.78d | 0d |  | 13000h | 10463.3h | 390,008 | 319,338.24 |
| 2 | 1.1 | **Project Management Activities** | 36d | 2020-10-05 A | 2020-11-23 A |  | 100% |  |  |  | 1648h | 1648h | 55,600 | 55,600 |
| 3 | 1.1.1 | **Create Project Budget** | 6d | 2020-10-05 A | 2020-10-12 A |  | 100% |  |  |  | 48h | 48h | 1,200 | 1,200 |
| 4 | 1.1.1.1 | Shelters | 2d | 2020-10-05 A | 2020-10-06 A |  | 100% |  |  | ReqEng_2 | 16h | 16h | 400 | 400 |
| 5 | 1.1.1.2 | Food Shelters | 2d | 2020-10-07 A | 2020-10-08 A | 4 | 100% |  |  | ReqEng_3 | 16h | 16h | 400 | 400 |
| 6 | 1.1.1.3 | Hospitals | 2d | 2020-10-09 A | 2020-10-12 A | 5 | 100% |  |  | ReqEng_4 | 16h | 16h | 400 | 400 |
| 7 | 1.1.2 | Create Risk Plan | 10d | 2020-10-13 A | 2020-10-26 A | 3 | 100% |  |  | ReqEng_4; ReqEng_5 | 160h | 160h | 4,000 | 4,000 |
| 8 | 1.1.3 | Acquire Employees | 20d | 2020-10-27 A | 2020-11-23 A | 7 | 100% |  |  | Arch_1 - Lead; Dev_1 - Lead; Project Manager | 480h | 480h | 19,360 | 19,360 |
| 9 | 1.1.4 | Acquire Resources | 20d | 2020-10-27 A | 2020-11-23 A | 7 | 100% |  |  | Arch_2; Arch_3; DepEng_1 - Lead; Dev_2; Dev_3; Tester_1 - Lead | 960h | 960h | 31,040 | 31,040 |
| 10 | 1.2 | **Requirements** | 89d | 2020-11-24 A | 2021-03-26 A |  | 100% |  |  |  | 4464h | 4464h | 130,504 | 130,504 |
| 11 | 1.2.1 | **Requirements Document Draft for UI/UX** | 45d | 2020-11-24 A | 2021-01-25 A |  | 100% |  |  |  | 720h | 720h | 19,800 | 19,800 |
| 12 | 1.2.1.1 | Create Profile Page Requirements Document Draft | 10d | 2020-11-24 A | 2020-12-07 A | 2 | 100% |  |  | ReqEng_2; Dev_2 | 160h | 160h | 4,400 | 4,400 |
| 13 | 1.2.1.2 | Create Sign In Page Requirements Document Draft | 5d | 2020-12-08 A | 2020-12-14 A | 12 | 100% |  |  | ReqEng_2; Dev_2 | 80h | 80h | 2,200 | 2,200 |
| 14 | 1.2.1.3 | Create Hospital Page Requirements Document Draft | 5d | 2020-12-15 A | 2020-12-21 A | 13 | 100% |  |  | ReqEng_2; Dev_2; Dev_4 | 80h | 80h | 2,200 | 2,200 |
| 15 | 1.2.1.4 | Create Shelter Page Requirements Document Draft | 5d | 2020-12-22 A | 2020-12-28 A | 14 | 100% |  |  | ReqEng_2; Dev_2; Dev_4 | 80h | 80h | 2,200 | 2,200 |
| 16 | 1.2.1.5 | Create Search Page Requirements Document Draft | 10d | 2020-12-29 A | 2021-01-11 A | 15 | 100% |  |  | ReqEng_2; Dev_2; Dev_4 | 160h | 160h | 4,400 | 4,400 |
| 17 | 1.2.1.6 | Create Map Page Requirements Document Draft | 10d | 2021-01-12 A | 2021-01-25 A | 16 | 100% |  |  | ReqEng_2; Dev_2; Dev_4 | 160h | 160h | 4,400 | 4,400 |
| 18 | 1.2.2 | **Requirements Document Draft for Backend** | 10d | 2020-11-24 A | 2020-12-07 A |  | 100% |  |  |  | 304h | 304h | 8,960 | 8,960 |
| 19 | 1.2.2.1 | **Create Front End Integration Document Draft** | 10d | 2020-11-24 A | 2020-12-07 A |  | 100% |  |  |  | 160h | 160h | 4,400 | 4,400 |
| 20 | 1.2.2.1.1 | Research Navigational API Resources | 10d | 2020-11-24 A | 2020-12-07 A | 2 | 100% |  |  | ReqEng_3; Dev_3 | 160h | 160h | 4,400 | 4,400 |
| 21 | 1.2.2.2 | **Create Database Requirements Document Draft** | 6d | 2020-11-24 A | 2020-12-01 A |  | 100% |  |  |  | 144h | 144h | 4,560 | 4,560 |
| 22 | 1.2.2.2.1 | Decide on server size | 2d | 2020-11-24 A | 2020-11-25 A | 9 | 100% |  |  | ReqEng_4; Arch_2; Dev_4 | 48h | 48h | 1,520 | 1,520 |
| 23 | 1.2.2.2.2 | Decide on server locations | 2d | 2020-11-26 A | 2020-11-27 A | 22 | 100% |  |  | ReqEng_4; Arch_2; Dev_4 | 48h | 48h | 1,520 | 1,520 |
| 24 | 1.2.2.2.3 | Decide on server types (SQL, noSQL, AWS) | 2d | 2020-11-30 A | 2020-12-01 A | 23 | 100% |  |  | ReqEng_4; Arch_2; Dev_4 | 48h | 48h | 1,520 | 1,520 |

| ID | WBS | Task | Duration | Start | Finish | Predecessors | Complete | Resources | Work | Actual work | Cost | Actual cost |
| --- | --- | --- | --- | --- | --- | --- | --- | --- | --- | --- | --- | --- |
| 25 | 1.2.3 | **Requirements Document Draft for API** | 59d | 2020-11-24 A | 2021-02-12 A |  | 100% |  | 1256h | 1256h | 39,712 | 39,712 |
| 26 | 1.2.3.1 | **Geo-Location** | 25d | 2020-11-24 A | 2020-12-28 A |  | 100% |  | 600h | 600h | 19,600 | 19,600 |
| 27 | 1.2.3.1.1 | Determine Specifications on Compression of Data | 5d | 2020-11-24 A | 2020-11-30 A | 2 | 100% | Dev_5; ReqEng_5; Arch_1 - Lead | 120h | 120h | 3,920 | 3,920 |
| 28 | 1.2.3.1.2 | Determine Export Functionality capabilities | 5d | 2020-12-01 A | 2020-12-07 A | 27 | 100% | Dev_5; ReqEng_5; Arch_1 - Lead | 120h | 120h | 3,920 | 3,920 |
| 29 | 1.2.3.1.3 | Get a List of of APIs for Geo Location | 5d | 2020-12-08 A | 2020-12-14 A | 28 | 100% | Dev_5; ReqEng_5; Arch_1 - Lead | 120h | 120h | 3,920 | 3,920 |
| 30 | 1.2.3.1.4 | Findout the Integrity Checking reqs | 10d | 2020-12-15 A | 2020-12-28 A | 29 | 100% | Dev_5; ReqEng_5; Arch_1 - Lead | 240h | 240h | 7,840 | 7,840 |
| 31 | 1.2.3.2 | **User specs** | 59d | 2020-11-24 A | 2021-02-12 A |  | 100% |  | 336h | 336h | 11,312 | 11,312 |
| 32 | 1.2.3.2.1 | Determine the correct user information specs | 4d | 2020-11-24 A | 2021-01-27 A | 2 | 100% | Arch_3; ReqEng_1 - Lead; Dev_1 - Lead | 48h | 48h | 1,616 | 1,616 |
| 33 | 1.2.3.2.2 | Find out the correct connections needed for many users | 2d | 2021-01-28 A | 2021-01-29 A | 32 | 100% | Arch_3; ReqEng_1 - Lead; Dev_1 - Lead | 48h | 48h | 1,616 | 1,616 |
| 34 | 1.2.3.2.3 | Determine Database Interactions and transactions needed for Reqs | 10d | 2021-02-01 A | 2021-02-12 A | 33 | 100% | Arch_3; ReqEng_1 - Lead; Dev_1 - Lead | 240h | 240h | 8,080 | 8,080 |
| 35 | 1.2.3.3 | **Routes for Escape** | 20d | 2020-12-08 A | 2021-01-04 A |  | 100% |  | 320h | 320h | 8,800 | 8,800 |
| 36 | 1.2.3.3.1 | Determine Shelter Info Specifications for Reqs | 5d | 2020-12-08 A | 2020-12-14 A | 2, 20 | 100% | ReqEng_3; Dev_3 | 80h | 80h | 2,200 | 2,200 |
| 37 | 1.2.3.3.2 | Gather Shelter Filtering information for Specifications of Reqs | 5d | 2020-12-15 A | 2020-12-21 A | 36 | 100% | ReqEng_3; Dev_3 | 80h | 80h | 2,200 | 2,200 |
| 38 | 1.2.3.3.3 | Determine reqs of Database interactions | 10d | 2020-12-22 A | 2021-01-04 A | 37 | 100% | ReqEng_3; Dev_3 | 160h | 160h | 4,400 | 4,400 |
| 39 | 1.2.4 | **Requirements Document Draft for Core Functionalities** | 61d | 2020-11-24 A | 2021-02-16 A |  | 100% |  | 1232h | 1232h | 30,320 | 30,320 |
| 40 | 1.2.4.1 | Set up communications and approval with religious shelters | 14d | 2020-11-24 A | 2020-12-11 A | 2 | 100% | Relations Manager; Tester_2; Tester_3 | 336h | 336h | 7,952 | 7,952 |
| 41 | 1.2.4.2 | Set up communications and approval with housing shelters | 14d | 2020-12-14 A | 2020-12-31 A | 40 | 100% | Relations Manager; Tester_2; Tester_3 | 336h | 336h | 7,952 | 7,952 |
| 42 | 1.2.4.3 | Set up communications and approval with food shelters | 14d | 2021-01-01 A | 2021-01-20 A | 41 | 100% | Relations Manager; Tester_2; Tester_3 | 336h | 336h | 7,952 | 7,952 |
| 43 | 1.2.4.4 | Create Navigation Requirements Document Draft | 2d | 2021-01-21 A | 2021-01-22 A | 42 | 100% | Project Manager; Relations Manager; Tester_2; Tester_3 | 64h | 64h | 1,856 | 1,856 |
| 44 | 1.2.4.5 | Create User-to-User Communications Requirements Document Draft | 2d | 2021-01-25 A | 2021-01-26 A | 43 | 100% | Project Manager; Relations Manager; Tester_2; Tester_3; ReqEng_1 - Lead | 80h | 80h | 2,304 | 2,304 |
| 45 | 1.2.4.6 | Create User Profile Requirements Document Draft | 2d | 2021-02-15 A | 2021-02-16 A | 44, 34 | 100% | Project Manager; Relations Manager; Tester_2; Tester_3; ReqEng_1 - Lead | 80h | 80h | 2,304 | 2,304 |
| 46 | 1.2.5 | **Requirements Documents for Application Security** | 19d | 2021-01-26 A | 2021-02-19 A |  | 100% |  | 56h | 56h | 1,472 | 1,472 |
| 47 | 1.2.5.1 | Obtain security requirements | 3d | 2021-02-17 A | 2021-02-19 A | 45 | 100% | ReqEng_1 - Lead | 24h | 24h | 672 | 672 |
| 48 | 1.2.5.2 | Abuse case scenarios document | 2d | 2021-01-26 A | 2021-01-27 A | 17, 38 | 100% | ReqEng_2; ReqEng_3 | 32h | 32h | 800 | 800 |

| ID | WBS | Task | Duration | Start | Finish | Predecessors | Complete | Remaining | Total slack | Free slack | Resources | Work | Actual work | Cost | Actual cost |
| --- | --- | --- | --- | --- | --- | --- | --- | --- | --- | --- | --- | --- | --- | --- | --- |
| 49 | 1.2.6 | **Submit Final Requirements Document for Approval** | 28d | 2021-02-17 A | 2021-03-26 A |  | 100% |  |  |  |  | 896h | 896h | 30,240 | 30,240 |
| 50 | 1.2.6.1 | Review with Legal Authorities | 14d | 2021-02-17 A | 2021-03-08 A | 39 | 100% |  |  |  | Project Manager; Relations Manager | 224h | 224h | 7,840 | 7,840 |
| 51 | 1.2.6.2 | Finalize Requirements Document | 14d | 2021-03-09 A | 2021-03-26 A | 50 | 100% |  |  |  | Arch_1 - Lead; Dev_1 - Lead; Project Manager; Relations Manager; ReqEng_1 - Lead; Tester_1 - Lead | 672h | 672h | 22,400 | 22,400 |
| 52 | 1.3 | **Design** | 84d | 2021-03-29 A | 2021-07-22 | 51 | 95% | 4.17d | 79d |  |  | 2080h | 1990h | 68,360 | 64,750 |
| 53 | 1.3.1 | **Design Document Draft for API** | 23d | 2021-03-29 A | 2021-04-28 |  | 92% | 1.89d | 137d | 58d |  | 968h | 902h | 31,672 | 29,094 |
| 54 | 1.3.1.1 | **GeoLocation** | 14d | 2021-03-29 A | 2021-04-15 A |  | 100% |  |  |  |  | 192h | 192h | 6,016 | 6,016 |
| 55 | 1.3.1.1.1 | Compression Setup for maximizing data between field and API | 5d | 2021-03-29 A | 2021-04-02 A | 30, 51 | 100% |  |  |  | Arch_1 - Lead; Tester_2 | 80h | 80h | 2,640 | 2,640 |
| 56 | 1.3.1.1.2 | Export Functionality Setup | 5d | 2021-04-05 A | 2021-04-09 A | 55 | 100% |  |  |  | Arch_1 - Lead; Tester_2 | 80h | 80h | 2,640 | 2,640 |
| 57 | 1.3.1.1.3 | Integrity Checking Setup | 4d | 2021-04-12 A | 2021-04-15 A | 56 | 100% |  |  |  | Tester_2 | 32h | 32h | 736 | 736 |
| 58 | 1.3.1.2 | **User** | 11d | 2021-03-29 A | 2021-04-12 A |  | 100% |  |  |  |  | 264h | 264h | 8,184 | 8,184 |
| 59 | 1.3.1.2.1 | User Info Setup | 5d | 2021-03-29 A | 2021-04-02 A | 12 | 100% |  |  |  | Arch_2; Dev_4; Tester_3 | 120h | 120h | 3,720 | 3,720 |
| 60 | 1.3.1.2.2 | Connection to other User Setup | 3d | 2021-04-05 A | 2021-04-07 A | 59 | 100% |  |  |  | Arch_2; Dev_4; Tester_3 | 72h | 72h | 2,232 | 2,232 |
| 61 | 1.3.1.2.3 | Database Interactions Setup | 3d | 2021-04-08 A | 2021-04-12 A | 60 | 100% |  |  |  | Arch_2; Dev_4; Tester_3 | 72h | 72h | 2,232 | 2,232 |
| 62 | 1.3.1.3 | **Routes For Escape** | 12d | 2021-03-29 A | 2021-04-13 A |  | 100% |  |  |  |  | 192h | 192h | 6,048 | 6,048 |
| 63 | 1.3.1.3.1 | Shelter Info Setup | 3d | 2021-03-29 A | 2021-03-31 A | 39 | 100% |  |  |  | Arch_3; Tester_4 | 48h | 48h | 1,512 | 1,512 |
| 64 | 1.3.1.3.2 | Shelter Filter Information | 4d | 2021-04-01 A | 2021-04-06 A | 63 | 100% |  |  |  | Arch_3; Tester_4 | 64h | 64h | 2,016 | 2,016 |
| 65 | 1.3.1.3.3 | Database Interactions Setup | 5d | 2021-04-07 A | 2021-04-13 A | 64 | 100% |  |  |  | Arch_3; Tester_4 | 80h | 80h | 2,520 | 2,520 |
| 66 | 1.3.1.4 | **Allow for CRUD calls** | 23d | 2021-03-29 A | 2021-04-28 A |  | 100% |  |  |  |  | 192h | 192h | 6,720 | 6,720 |
| 67 | 1.3.1.4.1 | Create Get Resources Setup | 6d | 2021-03-29 A | 2021-04-15 A | 30 | 100% |  |  |  | Arch_2; Dev_5 | 48h | 48h | 1,680 | 1,680 |
| 68 | 1.3.1.4.2 | Create Post Resources Setup | 3d | 2021-04-16 A | 2021-04-20 A | 67 | 100% |  |  |  | Arch_2; Dev_5 | 48h | 48h | 1,680 | 1,680 |
| 69 | 1.3.1.4.3 | Create Delete Resources Setup | 3d | 2021-04-21 A | 2021-04-23 A | 68 | 100% |  |  |  | Arch_2; Dev_5 | 48h | 48h | 1,680 | 1,680 |
| 70 | 1.3.1.4.4 | Create Put Resources Setup | 3d | 2021-04-26 A | 2021-04-28 A | 69 | 100% |  |  |  | Arch_2; Dev_5 | 48h | 48h | 1,680 | 1,680 |
| 71 | 1.3.1.5 | Connection Methods | 5d | 2021-04-12 A | 2021-04-16 A | 56 | 100% |  |  |  | Arch_1 - Lead; Dev_1 - Lead | 48h | 48h | 1,664 | 1,664 |
| 72 | 1.3.1.6 | Information Export Functionality | 7d | 2021-04-19 A | 2021-04-27 | 71 | 25% | 5.25d | 138d |  | Arch_1 - Lead; Dev_1 - Lead | 80h | 14h | 3,040 | 462 |

| ID | WBS | Task | Duration | Start | Finish | Predecessors | Complete | Resources | Work | Actual work | Cost | Actual cost |
| --- | --- | --- | --- | --- | --- | --- | --- | --- | --- | --- | --- | --- |
| 73 | 1.3.2 | **Design Document Draft for Back End** | 36d | 2021-03-29 A | 2021-05-17 A |  | 100% |  | 224h | 224h | 8,176 | 8,176 |
| 74 | 1.3.2.1 | Route location to location | 4d | 2021-04-28 A | 2021-05-03 A | 18, 72, 38 | 100% | Arch_1 - Lead; Dev_3 | 64h | 64h | 2,336 | 2,336 |
| 75 | 1.3.2.2 | Turn by turn directions for routes | 4d | 2021-05-04 A | 2021-05-07 A | 74 | 100% | Arch_1 - Lead; Dev_3 | 64h | 64h | 2,336 | 2,336 |
| 76 | 1.3.2.3 | **Design Schemas for objects:** | 6d | 2021-03-29 A | 2021-04-05 A |  | 100% |  | 48h | 48h | 1,440 | 1,440 |
| 77 | 1.3.2.3.1 | Housing Shelters | 1d | 2021-03-29 A | 2021-03-29 A | 21, 38 | 100% | Dev_3 | 8h | 8h | 240 | 240 |
| 78 | 1.3.2.3.2 | Food Shelters | 1d | 2021-03-30 A | 2021-03-30 A | 77 | 100% | Dev_3 | 8h | 8h | 240 | 240 |
| 79 | 1.3.2.3.3 | Religious Shelters | 1d | 2021-03-31 A | 2021-03-31 A | 78 | 100% | Dev_3 | 8h | 8h | 240 | 240 |
| 80 | 1.3.2.3.4 | Hospitals | 1d | 2021-04-01 A | 2021-04-01 A | 79 | 100% | Dev_3 | 8h | 8h | 240 | 240 |
| 81 | 1.3.2.3.5 | Users | 2d | 2021-04-02 A | 2021-04-05 A | 80 | 100% | Dev_3 | 16h | 16h | 480 | 480 |
| 82 | 1.3.2.4 | Develop connections scheme | 6d | 2021-05-10 A | 2021-05-17 A | 75 | 100% | Arch_1 - Lead | 48h | 48h | 2,064 | 2,064 |
| 83 | 1.3.3 | **Design Document Draft for Front End** | 53d | 2021-04-14 A | 2021-06-25 A |  | 100% |  | 432h | 432h | 13,280 | 13,280 |
| 84 | 1.3.3.1 | **Build Wireframe models** | 53d | 2021-04-14 A | 2021-06-25 A |  | 100% |  | 432h | 432h | 13,280 | 13,280 |
| 85 | 1.3.3.1.1 | **Navigation Screen** | 4d | 2021-04-14 A | 2021-04-19 A |  | 100% |  | 32h | 32h | 1,280 | 1,280 |
| 86 | 1.3.3.1.1.1 | Map View | 2d | 2021-04-14 A | 2021-04-15 A | 17, 65 | 100% | Arch_3 | 16h | 16h | 640 | 640 |
| 87 | 1.3.3.1.1.2 | Turn by Turn | 2d | 2021-04-16 A | 2021-04-19 A | 86 | 100% | Arch_3 | 16h | 16h | 640 | 640 |
| 88 | 1.3.3.1.2 | **Pages** | 39d | 2021-05-04 A | 2021-06-25 A |  | 100% |  | 400h | 400h | 12,000 | 12,000 |
| 89 | 1.3.3.1.2.1 | Profile Page | 12d | 2021-05-04 A | 2021-05-21 A | 70, 74 | 100% | Dev_4; Dev_5 | 96h | 96h | 2,880 | 2,880 |
| 90 | 1.3.3.1.2.2 | Sign In Page | 12d | 2021-05-24 A | 2021-06-08 A | 89 | 100% | Dev_4; Dev_5 | 96h | 96h | 2,880 | 2,880 |
| 91 | 1.3.3.1.2.3 | Search page | 3d | 2021-06-09 A | 2021-06-11 A | 90 | 100% | Dev_4; Dev_5 | 48h | 48h | 1,440 | 1,440 |
| 92 | 1.3.3.1.2.4 | Nearby Residence Shelters Page | 2d | 2021-06-14 A | 2021-06-15 A | 91 | 100% | Dev_4; Dev_5 | 32h | 32h | 960 | 960 |
| 93 | 1.3.3.1.2.5 | Nearby Food Shelters Page | 2d | 2021-06-16 A | 2021-06-17 A | 92 | 100% | Dev_4; Dev_5 | 32h | 32h | 960 | 960 |
| 94 | 1.3.3.1.2.6 | Add New Shelters Page | 1d | 2021-06-18 A | 2021-06-18 A | 93 | 100% | Dev_4; Dev_5 | 16h | 16h | 480 | 480 |
| 95 | 1.3.3.1.2.7 | Connect Page | 5d | 2021-06-21 A | 2021-06-25 A | 94 | 100% | Dev_4; Dev_5 | 80h | 80h | 2,400 | 2,400 |
| 96 | 1.3.4 | **Design Document Draft for Core Functionalities** | 81d | 2021-03-29 A | 2021-07-19 A |  | 100% |  | 320h | 320h | 9,792 | 9,792 |
| 97 | 1.3.4.1 | **Build wireframes** | 16d | 2021-06-28 A | 2021-07-19 A |  | 100% |  | 256h | 256h | 7,680 | 7,680 |
| 98 | 1.3.4.1.1 | Radar View | 5d | 2021-06-28 A | 2021-07-02 A | 95 | 100% | Dev_4; Dev_5 | 80h | 80h | 2,400 | 2,400 |
| 99 | 1.3.4.1.2 | Shelter Recommendations | 5d | 2021-07-05 A | 2021-07-09 A | 98 | 100% | Dev_4; Dev_5 | 80h | 80h | 2,400 | 2,400 |
| 100 | 1.3.4.1.3 | Disaster Preparation | 3d | 2021-07-12 A | 2021-07-14 A | 99 | 100% | Dev_4; Dev_5 | 48h | 48h | 1,440 | 1,440 |
| 101 | 1.3.4.1.4 | Equipment Checklist | 3d | 2021-07-15 A | 2021-07-19 A | 100 | 100% | Dev_4; Dev_5 | 48h | 48h | 1,440 | 1,440 |
| 102 | 1.3.4.2 | Map out user scenarios | 8d | 2021-03-29 A | 2021-04-07 A | 51 | 100% | Dev_1 - Lead | 64h | 64h | 2,112 | 2,112 |

| ID | WBS | Task | Duration | Start | Finish | Predecessors | Complete | Remaining | Total slack | Resources | Work | Actual work | Cost | Actual cost |
| --- | --- | --- | --- | --- | --- | --- | --- | --- | --- | --- | --- | --- | --- | --- |
| 103 | 1.3.5 | **Security Design Documents** | 47d | 2021-03-29 A | 2021-06-01 A |  | 100% |  |  |  | 112h | 112h | 4,408 | 4,408 |
| 104 | 1.3.5.1 | Design Risk Analysis | 4d | 2021-05-18 A | 2021-05-21 A | 82 | 100% |  |  | Arch_1 - Lead | 32h | 32h | 1,376 | 1,376 |
| 105 | 1.3.5.2 | Risk-based security test plans | 3d | 2021-03-29 A | 2021-03-31 A |  | 100% |  |  | Tester_1 - Lead | 24h | 24h | 624 | 624 |
| 106 | 1.3.5.3 | Conduct Architecture Risk Analysis | 2d | 2021-05-24 A | 2021-05-25 A | 104 | 100% |  |  | Arch_1 - Lead | 16h | 16h | 688 | 688 |
| 107 | 1.3.5.4 | Security Design Review | 5d | 2021-05-26 A | 2021-06-01 A | 106 | 100% |  |  | Arch_1 - Lead | 40h | 40h | 1,720 | 1,720 |
| 108 | 1.3.6 | Compile and Sign off on Design Documents | 3d | 2021-07-20 | 2021-07-22 | 53, 73, 83, 96, 103 |  |  | 79d | Arch_1 - Lead | 24h |  | 1,032 |  |
| 109 | 1.4 | **Develop** | 169d | 2021-01-28 A | 2021-09-21 |  | 69% | 51.91d | 36d |  | 2344h | 1641.28h | 72,568 | 50,854.24 |
| 110 | 1.4.1 | Copy Database for Development | 5d | 2021-05-18 A | 2021-05-24 A | 73 | 100% |  |  | OITDirector | 40h | 40h | 1,200 | 1,200 |
| 111 | 1.4.2 | **API Development** | 31d | 2021-04-29 A | 2021-06-10 A |  | 100% |  |  |  | 264h | 264h | 7,920 | 7,920 |
| 112 | 1.4.2.1 | CRUD Calls | 5d | 2021-04-29 A | 2021-05-05 A | 66, 34 | 100% |  |  | Dev_2 | 40h | 40h | 1,200 | 1,200 |
| 113 | 1.4.2.2 | Endpoint Routing | 5d | 2021-05-10 A | 2021-05-24 A | 66, 75 | 100% |  |  | Dev_3 | 40h | 40h | 1,200 | 1,200 |
| 114 | 1.4.2.3 | Functionality for exporting of Data through API | 3d | 2021-05-06 A | 2021-05-10 A | 28, 112 | 100% |  |  | Dev_2 | 24h | 24h | 720 | 720 |
| 115 | 1.4.2.4 | Integrity Checking of API data | 5d | 2021-05-25 A | 2021-06-03 A | 113 | 100% |  |  | Dev_3 | 40h | 40h | 1,200 | 1,200 |
| 116 | 1.4.2.5 | Escape Route Functionality | 10d | 2021-05-11 A | 2021-05-24 A | 114 | 100% |  |  | Dev_2 | 80h | 80h | 2,400 | 2,400 |
| 117 | 1.4.2.6 | User Information | 5d | 2021-06-04 A | 2021-06-10 A | 44, 115 | 100% |  |  | Dev_3 | 40h | 40h | 1,200 | 1,200 |
| 118 | 1.4.3 | **Backend Development** | 128d | 2021-01-28 A | 2021-07-26 A |  | 100% |  |  |  | 576h | 576h | 15,960 | 15,960 |
| 119 | 1.4.3.1 | **Acquire Data** | 18d | 2021-01-28 A | 2021-02-22 A |  | 100% |  |  |  | 360h | 360h | 9,000 | 9,000 |
| 120 | 1.4.3.1.1 | Acquire evac routes from cities | 3d | 2021-01-28 A | 2021-02-01 A | 48 | 100% |  |  | ReqEng_2; ReqEng_3; ReqEng_4 | 72h | 72h | 1,800 | 1,800 |
| 121 | 1.4.3.1.2 | Acquire housing shelters | 3d | 2021-02-02 A | 2021-02-09 A | 120, 77 | 100% |  |  | ReqEng_2; ReqEng_3; ReqEng_4 | 72h | 72h | 1,800 | 1,800 |
| 122 | 1.4.3.1.3 | Acquire food shelters | 3d | 2021-02-10 A | 2021-02-12 A | 121, 78 | 100% |  |  | ReqEng_2; ReqEng_3; ReqEng_4 | 72h | 72h | 1,800 | 1,800 |
| 123 | 1.4.3.1.4 | Acquire open religious shelters | 3d | 2021-02-15 A | 2021-02-17 A | 122, 79 | 100% |  |  | ReqEng_2; ReqEng_3; ReqEng_4 | 72h | 72h | 1,800 | 1,800 |
| 124 | 1.4.3.1.5 | Acquire hospital locations | 3d | 2021-02-18 A | 2021-02-22 A | 123, 80 | 100% |  |  | ReqEng_2; ReqEng_3; ReqEng_4 | 72h | 72h | 1,800 | 1,800 |
| 125 | 1.4.3.2 | Setup Databases | 2d | 2021-05-25 A | 2021-05-26 A | 73, 110 | 100% |  |  | OITDirector | 16h | 16h | 480 | 480 |
| 126 | 1.4.3.3 | Create tables with designed object schemas | 5d | 2021-07-20 A | 2021-07-26 A | 73, 101 | 100% |  |  | Dev_4 | 40h | 40h | 1,200 | 1,200 |
| 127 | 1.4.3.4 | Integrate with APIs | 20d | 2021-05-18 A | 2021-06-14 A | 53, 73 | 100% |  |  | Dev_1 - Lead | 160h | 160h | 5,280 | 5,280 |

| ID | WBS | Task | Duration | Start | Finish | Predecessors | Complete | Remaining | Total slack | Free slack | Resources | Work | Actual work | Cost | Actual cost |
| --- | --- | --- | --- | --- | --- | --- | --- | --- | --- | --- | --- | --- | --- | --- | --- |
| 128 | 1.4.4 | **Front End Development** | 61d | 2021-06-01 A | 2021-08-25 |  | 73% | 16.48d | 25d |  |  | 1072h | 712h | 35,680 | 24,280 |
| 129 | 1.4.4.1 | **Build pages with dummy data** | 43d | 2021-06-11 A | 2021-08-10 |  | 82% | 7.87d | 36d |  |  | 536h | 416h | 18,560 | 14,360 |
| 130 | 1.4.4.1.1 | **Navigation Screen** | 10d | 2021-06-11 A | 2021-06-24 A |  | 100% |  |  |  |  | 160h | 160h | 4,800 | 4,800 |
| 131 | 1.4.4.1.1.1 | Map View | 5d | 2021-06-11 A | 2021-06-17 A | 86, 116, 117 | 100% |  |  |  | Dev_2; Dev_3 | 80h | 80h | 2,400 | 2,400 |
| 132 | 1.4.4.1.1.2 | Turn by Turn | 5d | 2021-06-18 A | 2021-06-24 A | 87, 131 | 100% |  |  |  | Dev_2; Dev_3 | 80h | 80h | 2,400 | 2,400 |
| 133 | 1.4.4.1.2 | **Pages** | 40d | 2021-06-16 A | 2021-08-10 |  | 76% | 9.68d | 36d |  |  | 376h | 256h | 13,760 | 9,560 |
| 134 | 1.4.4.1.2.1 | Profile Page | 3d | 2021-07-20 A | 2021-07-22 A | 89, 70, 101 | 100% |  |  |  | Dev_5; Arch_2 | 48h | 48h | 1,680 | 1,680 |
| 135 | 1.4.4.1.2.2 | Sign In Page | 3d | 2021-07-23 A | 2021-07-27 A | 134 | 100% |  |  |  | Dev_5; Arch_2 | 48h | 48h | 1,680 | 1,680 |
| 136 | 1.4.4.1.2.3 | Search page | 5d | 2021-07-28 A | 2021-08-03 | 135 | 50% | 2.5d | 36d | 0d | Dev_5; Arch_2 | 80h | 40h | 2,800 | 1,400 |
| 137 | 1.4.4.1.2.4 | Nearby Residence Shelters Page | 5d | 2021-08-04 | 2021-08-10 | 136 |  |  | 36d | 0d | Dev_5; Arch_2 | 80h |  | 2,800 |  |
| 138 | 1.4.4.1.2.5 | Nearby Food Shelters Page | 5d | 2021-06-16 A | 2021-06-22 A | 92 | 100% |  |  |  | Arch_3 | 40h | 40h | 1,600 | 1,600 |
| 139 | 1.4.4.1.2.6 | Add New Shelters Page | 5d | 2021-06-23 A | 2021-06-29 A | 138 | 100% |  |  |  | Arch_3 | 40h | 40h | 1,600 | 1,600 |
| 140 | 1.4.4.1.2.7 | Connect Page | 5d | 2021-06-30 A | 2021-07-06 A | 139 | 100% |  |  |  | Arch_3 | 40h | 40h | 1,600 | 1,600 |
| 141 | 1.4.4.2 | **Connect data from backend resources** | 61d | 2021-06-01 A | 2021-08-25 |  | 65% | 21.22d | 0d |  |  | 536h | 296h | 17,120 | 9,920 |
| 142 | 1.4.4.2.1 | **Navigation Screen** | 10d | 2021-06-01 A | 2021-06-15 A |  | 100% |  |  |  |  | 80h | 80h | 3,440 | 3,440 |
| 143 | 1.4.4.2.1.1 | Map View | 5d | 2021-06-01 A | 2021-06-08 A | 86, 75, 107 | 100% |  |  |  | Arch_1 - Lead; Dev_4 | 40h | 40h | 1,720 | 1,720 |
| 144 | 1.4.4.2.1.2 | Turn by Turn | 5d | 2021-06-08 A | 2021-06-15 A | 143 | 100% |  |  |  | Arch_1 - Lead; Dev_4 | 40h | 40h | 1,720 | 1,720 |
| 145 | 1.4.4.2.2 | **Pages** | 44d | 2021-06-25 A | 2021-08-25 |  | 56% | 19.56d | 0d |  |  | 456h | 216h | 13,680 | 6,480 |
| 146 | 1.4.4.2.2.1 | Profile Page | 5d | 2021-06-25 A | 2021-07-01 A | 89, 132 | 100% |  |  |  | Dev_2; Dev_3 | 56h | 56h | 1,680 | 1,680 |
| 147 | 1.4.4.2.2.2 | Sign In Page | 10d | 2021-07-02 A | 2021-07-27 A | 90, 146 | 100% |  |  |  | Dev_2; Dev_3 | 80h | 80h | 2,400 | 2,400 |
| 148 | 1.4.4.2.2.3 | Search page | 5d | 2021-07-28 A | 2021-08-03 A | 91, 147 | 100% |  |  |  | Dev_2; Dev_3 | 80h | 80h | 2,400 | 2,400 |
| 149 | 1.4.4.2.2.4 | Nearby Residence Shelters Page | 5d | 2021-08-04 | 2021-08-10 | 92, 148 |  |  | 0d |  | Dev_2; Dev_3 | 80h |  | 2,400 |  |
| 150 | 1.4.4.2.2.5 | Nearby Food Shelters Page | 6d | 2021-08-11 | 2021-08-18 | 93, 149 |  |  | 0d |  | Dev_2; Dev_3 | 80h |  | 2,400 |  |
| 151 | 1.4.4.2.2.6 | Add New Shelters Page | 5d | 2021-08-19 | 2021-08-25 | 94, 150 |  |  | 0d |  | Dev_2; Dev_3 | 80h |  | 2,400 |  |

| ID | WBS | Task | Duration | Start | Finish | Predecessors | Complete | Remaining | Total slack | Free slack | Resources | Work | Actual work | Cost | Actual cost |
| --- | --- | --- | --- | --- | --- | --- | --- | --- | --- | --- | --- | --- | --- | --- | --- |
| 152 | 1.4.5 | **Core Functionalities Development** | 41d | 2021-07-27 A | 2021-09-21 |  | 11% | 36.3d | 36d |  |  | 384h | 44h | 11,544 | 1,320 |
| 153 | 1.4.5.1 | **Build page modules** | 26d | 2021-07-27 A | 2021-08-31 |  | 25% | 19.5d | 48d |  |  | 176h | 44h | 5,280 | 1,320 |
| 154 | 1.4.5.1.1 | Radar view | 10d | 2021-08-11 | 2021-08-24 | 98, 137 |  |  | 36d | 0d | Dev_5 | 80h |  | 2,400 |  |
| 155 | 1.4.5.1.2 | Shelter Recommendations from Navigation | 5d | 2021-07-27 A | 2021-08-02 A | 99, 126 | 100% |  |  |  | Dev_4 | 40h | 40h | 1,200 | 1,200 |
| 156 | 1.4.5.1.3 | **Disaster Preparation Recommendations Page** | 5d | 2021-08-25 | 2021-08-31 |  |  |  | 48d | 0d |  | 40h |  | 1,200 |  |
| 157 | 1.4.5.1.3.1 | Pull data from web and offer download for offline | 5d | 2021-08-25 | 2021-08-31 | 154 |  |  | 48d |  | Dev_5 | 40h |  | 1,200 |  |
| 158 | 1.4.5.1.4 | Equipment Checklist page on profile | 2d | 2021-08-03 A | 2021-08-04 | 101, 155 | 25% | 1.5d | 50d | 0d | Dev_4 | 16h | 4h | 480 | 120 |
| 159 | 1.4.5.2 | **Connect from backend** | 34d | 2021-08-05 | 2021-09-21 |  |  |  | 36d |  |  | 208h |  | 6,264 |  |
| 160 | 1.4.5.2.1 | **Radar Screen** | 15d | 2021-08-25 | 2021-09-14 |  |  |  | 36d |  |  | 120h |  | 3,600 |  |
| 161 | 1.4.5.2.1.1 | Map View with weather radar | 15d | 2021-08-25 | 2021-09-14 | 154, 158 |  |  | 36d | 0d | Dev_4 | 120h |  | 3,600 |  |
| 162 | 1.4.5.2.2 | Shelter Recommendations | 5d | 2021-09-15 | 2021-09-21 | 155, 161 |  |  | 36d |  | Dev_4 | 40h |  | 1,200 |  |
| 163 | 1.4.5.2.3 | Disaster Preparation | 3d | 2021-09-01 | 2021-09-03 | 156, 119 |  |  | 48d |  | Dev_1 - Lead | 24h |  | 792 |  |
| 164 | 1.4.5.2.4 | Equipment Checklist | 3d | 2021-08-05 | 2021-08-09 | 158 |  |  | 67d |  | ReqEng_1 - Lead | 24h |  | 672 |  |
| 165 | 1.4.6 | **Build Testable Packages** | 52.34d | 2021-06-15 A | 2021-08-26 |  | 66% | 17.8d | 14.66d |  |  | 8h | 5.28h | 264 | 174.24 |
| 166 | 1.4.6.1 | Build API Test Package | 0.33d | 2021-06-15 A | 2021-06-15 A | 117, 127 | 100% |  |  |  | Dev_1 - Lead | 2.64h | 2.64h | 87.12 | 87.12 |
| 167 | 1.4.6.2 | Build Backend Test Packages | 0.33d | 2021-07-27 A | 2021-07-27 A | 166, 126 | 100% |  |  |  | Dev_1 - Lead | 2.64h | 2.64h | 87.12 | 87.12 |
| 168 | 1.4.6.3 | Build Front End Test Package | 0.34d | 2021-08-26 | 2021-08-26 | 167, 151 |  |  | 14.66d | 0d | Dev_1 - Lead | 2.72h |  | 89.76 |  |
| 169 | 1.5 | **Testing** | 107d | 2021-05-25 A | 2021-10-20 |  | 42% | 62.42d | 0d |  |  | 1896h | 720h | 45,648 | 17,630 |
| 170 | 1.5.1 | Copy Database for Testing | 5d | 2021-05-27 A | 2021-06-02 A | 73, 125 | 100% |  |  |  | OITDirector | 40h | 40h | 1,200 | 1,200 |
| 171 | 1.5.2 | **API Testing** | 55.33d | 2021-05-25 A | 2021-08-10 |  | 95% | 2.96d | 44.67d |  |  | 560h | 530h | 13,480 | 12,700 |
| 172 | 1.5.2.1 | API CRUD Calls Test | 10d | 2021-06-15 A | 2021-06-29 A | 166 | 100% |  |  |  | Tester_1 - Lead | 80h | 80h | 2,080 | 2,080 |
| 173 | 1.5.2.2 | Endpoints Routing Test | 15d | 2021-05-25 A | 2021-06-14 A | 113 | 100% |  |  |  | Tester_2 | 120h | 120h | 2,760 | 2,760 |
| 174 | 1.5.2.3 | Integrity Checking for API Test | 15d | 2021-06-04 A | 2021-06-24 A | 115 | 100% |  |  |  | Tester_3 | 120h | 120h | 2,760 | 2,760 |
| 175 | 1.5.2.4 | User Information Dispalying correctly valid QA TEST | 15d | 2021-06-11 A | 2021-07-01 A | 117 | 100% |  |  |  | Tester_4 | 120h | 120h | 2,760 | 2,760 |
| 176 | 1.5.2.5 | Escape Route Functionality Test | 15d | 2021-06-29 A | 2021-08-10 | 116, 172 | 75% | 3.75d | 44.67d |  | Tester_1 - Lead | 120h | 90h | 3,120 | 2,340 |

| ID | WBS | Task | Duration | Start | Finish | Predecessors | Complete | Remaining | Total slack | Free slack | Resources | Work | Actual work | Cost | Actual cost |
| --- | --- | --- | --- | --- | --- | --- | --- | --- | --- | --- | --- | --- | --- | --- | --- |
| 177 | 1.5.3 | **Backend Testing** | 20d | 2021-07-27 A | 2021-08-24 | 170 | 29% | 14.23d | 34.67d | 31.67d |  | 520h | 150h | 12,520 | 3,730 |
| 178 | 1.5.3.1 | Load testing | 20d | 2021-07-27 A | 2021-08-24 | 119, 173, 167 | 25% | 15d | 34.67d |  | Tester_2 | 160h | 40h | 3,680 | 920 |
| 179 | 1.5.3.2 | Security testing | 15d | 2021-07-27 A | 2021-08-17 | 119, 174, 167 | 25% | 11.25d | 39.67d |  | Tester_3 | 120h | 30h | 2,760 | 690 |
| 180 | 1.5.3.3 | Database tests | 10d | 2021-07-27 A | 2021-08-10 | 119, 167 | 50% | 5d | 44.67d |  | OITDirector | 80h | 40h | 2,400 | 1,200 |
| 181 | 1.5.3.4 | Load sharing testing | 20d | 2021-07-27 A | 2021-08-24 | 119, 175, 144, 167 | 25% | 15d | 19.67d | 0d | Tester_4 | 160h | 40h | 3,680 | 920 |
| 182 | 1.5.4 | **Front End Testing** | 31.67d | 2021-08-24 | 2021-10-06 |  |  |  | 3d | 0d |  | 480h |  | 11,400 |  |
| 183 | 1.5.4.1 | UI Testing | 15d | 2021-08-26 | 2021-09-16 | 142, 145, 168 |  |  | 14.66d | 0d | Tester_1 - Lead | 120h |  | 3,120 |  |
| 184 | 1.5.4.2 | Test different screen sizes | 15d | 2021-08-26 | 2021-09-16 | 142, 145, 168 |  |  | 14.66d | 0d | Tester_2 | 120h |  | 2,760 |  |
| 185 | 1.5.4.3 | I/O data flow testing | 15d | 2021-09-16 | 2021-10-06 | 145 |  |  | 0d |  | Tester_3 | 120h |  | 2,760 |  |
| 186 | 1.5.4.4 | Location testing with spoof locations | 15d | 2021-08-24 | 2021-09-14 | 142, 181 |  |  | 19.67d |  | Tester_4 | 120h |  | 2,760 |  |
| 187 | 1.5.5 | **Security testing** | 17.66d | 2021-09-16 | 2021-10-11 |  |  |  | 0d |  |  | 72h |  | 1,728 |  |
| 188 | 1.5.5.1 | Security test cases | 3d | 2021-09-16 | 2021-09-21 | 183 |  |  | 14.66d |  | Tester_1 - Lead | 24h |  | 624 |  |
| 189 | 1.5.5.2 | Dynamic analysis | 3d | 2021-09-16 | 2021-09-21 | 184 |  |  | 14.66d |  | Tester_2 | 24h |  | 552 |  |
| 190 | 1.5.5.3 | Penetration testing | 3d | 2021-10-07 | 2021-10-11 | 185 |  |  | 0d |  | Tester_3 | 24h |  | 552 |  |
| 191 | 1.5.6 | End to End Testing | 7d | 2021-10-12 | 2021-10-20 | 171, 177, 182, 187 |  |  | 0d |  | Tester_1 - Lead; Tester_2; Tester_3; Tester_4 | 224h |  | 5,320 |  |
| 192 | 1.6 | **Deployment** | 25d | 2021-10-07 | 2021-11-10 |  |  |  | 0d |  |  | 568h |  | 17,328 |  |
| 193 | 1.6.1 | **Backend Deployment** | 10d | 2021-10-21 | 2021-11-03 |  |  |  | 0d |  |  | 120h |  | 3,320 |  |
| 194 | 1.6.1.1 | Allow API availability to signed apps | 5d | 2021-10-21 | 2021-10-27 | 191 |  |  | 3d | 0d | DepEng_1 - Lead | 40h |  | 1,120 |  |
| 195 | 1.6.1.2 | Ensure rejection of DB access by anywhere else | 10d | 2021-10-21 | 2021-11-03 | 191 |  |  | 0d |  | OITDirector; DepEng_2 | 80h |  | 2,200 |  |
| 196 | 1.6.2 | **Core Functionality Deployment** | 5d | 2021-10-07 | 2021-10-13 |  |  |  | 15d |  |  | 80h |  | 2,120 |  |
| 197 | 1.6.2.1 | Check pages load in staging environment | 5d | 2021-10-07 | 2021-10-13 | 182, 177 |  |  | 15d |  | DepEng_2 | 40h |  | 1,000 |  |
| 198 | 1.6.2.2 | Check radar view consistently updates in staging environment | 5d | 2021-10-07 | 2021-10-13 | 182, 177 |  |  | 15d |  | DepEng_1 - Lead | 40h |  | 1,120 |  |
| 199 | 1.6.3 | **Security Documentation** | 3d | 2021-10-21 | 2021-10-25 |  |  |  | 5d |  |  | 72h |  | 1,728 |  |
| 200 | 1.6.3.1 | Final Security Overview Document | 3d | 2021-10-21 | 2021-10-25 | 191 |  |  | 5d | 2d | Tester_1 - Lead | 24h |  | 624 |  |
| 201 | 1.6.3.2 | Monitoring response plan | 3d | 2021-10-21 | 2021-10-25 | 191 |  |  | 12d |  | Tester_2; Tester_3 | 48h |  | 1,104 |  |
| 202 | 1.6.4 | Create and approve quality report | 2d | 2021-10-28 | 2021-10-29 | 191, 200, 194 |  |  | 3d |  | Project Manager; Arch_1 - Lead; DepEng_1 - Lead; Dev_1 - Lead; Relations Manager; Tester_1 - Lead | 96h |  | 3,200 |  |
| 203 | 1.6.5 | Publish app to App Store | 5d | 2021-11-04 | 2021-11-10 | 193, 196, 202 |  |  | 0d |  | Arch_1 - Lead; DepEng_1 - Lead; DepEng_2; Dev_1 - Lead; Project Manager | 200h |  | 6,960 |  |
